# Planificación, ejecución y gestión del cambio

Schedule from MS Project, 2025-09-10 to 2026-04-08, costs in $, A marks actual dates.

## Calendars

- Calendario: Mon-Fri 09:00-13:00, 15:00-19:00; Sat-Sun off. Exceptions (off unless hours are given): 2025-10-13 (Dia de la raza), 2025-11-03 (Dia de todos los santos), 2025-11-17 (Dia de la independencia CTG), 2025-12-08 (Dia inmaculada concepción), 2025-12-25 (Navidad), 2026-01-01 (Año Nuevo), 2026-01-06 (Reyes Magos), 2026-03-24 (San José).

## Resources

| Resource | Rate |
| --- | --- |
| Project Manager | 14 |
| Programador VR1 | 15 |
| Animador 3D | 12 |
| Modelador y Texturizador 3D | 12 |
| Investigador UX | 12 |
| Oculus Quest |  |
| Programador VR2 | 15 |
| Programador VR3 | 15 |

## Schedule

| ID | WBS | Task | Duration | Start | Finish | Predecessors | Complete | Remaining | Baseline start | Baseline finish | Baseline duration | Total slack | Constraint | Resources | Work | Actual work | Cost | Baseline cost | Actual cost |
| --- | --- | --- | --- | --- | --- | --- | --- | --- | --- | --- | --- | --- | --- | --- | --- | --- | --- | --- | --- |
| 1 | 1 | **1.1 Concepto** | 29d | 2025-09-10 A | 2025-10-21 A |  | 100% |  | 2025-09-10 | 2025-10-21 | 29d |  |  |  | 472h | 472h | 6,298 | 6,298 | 6,298 |
| 2 | 1.1 | 1.1.1 Recolección de requerimientos | 7d | 2025-09-10 A | 2025-09-18 A |  | 100% |  | 2025-09-10 | 2025-09-18 | 7d |  |  | Project Manager | 56h | 56h | 784 | 784 | 784 |
| 3 | 1.2 | 1.1.2 Prototipo | 15d | 2025-09-19 A | 2025-10-09 A | 2 | 100% |  | 2025-09-19 | 2025-10-09 | 15d |  |  | Programador VR1; Animador 3D; Modelador y Texturizador 3D; Oculus Quest [0.1%] | 360h | 360h | 4,730 | 4,730 | 4,730 |
| 4 | 1.3 | 1.1.3 Definición del alcance | 7d | 2025-10-10 A | 2025-10-21 A | 3 | 100% |  | 2025-10-10 | 2025-10-21 | 7d |  | finish no earlier than 2025-10-20 | Project Manager | 56h | 56h | 784 | 784 | 784 |
| 5 | 2 | **1.2 Desarrollo** | 70d | 2025-10-22 A | 2026-02-04 |  | 99% | 0d | 2025-10-22 | 2026-02-04 | 70d | 44d |  |  | 1124h | 1124h | 15,868 | 15,800 | 15,832 |
| 6 | 2.1 | 1.2.1 Modelado | 15d | 2025-10-22 A | 2025-11-12 A | 4 | 100% |  | 2025-10-22 | 2025-11-12 | 15d |  | finish no earlier than 2025-11-10 | Modelador y Texturizador 3D; Oculus Quest [0.1%] | 120h | 120h | 1,490 | 1,490 | 1,490 |
| 7 | 2.2 | 1.2.2 Texturizado e iluminación | 10d | 2025-11-13 A | 2025-11-27 A | 6 | 100% |  | 2025-11-13 | 2025-11-27 | 10d |  | finish no earlier than 2025-11-24 | Modelador y Texturizador 3D; Oculus Quest [0.1%] | 80h | 80h | 1,010 | 1,010 | 1,010 |
| 8 | 2.3 | 1.2.3 Animaciones | 25d | 2025-11-13 A | 2025-12-19 | 7SS | 99% | 0d | 2025-11-13 | 2025-12-19 | 25d | 74d |  | Animador 3D; Oculus Quest [0.1%]; Modelador y Texturizador 3D [50%] | 200h | 200h | 2,450 | 2,450 | 2,450 |
| 9 | 2.4 | 1.2.4 Desarrollo de código | 30d | 2025-12-22 A | 2026-02-04 A | 8 | 100% |  | 2025-12-22 | 2026-02-04 | 30d |  |  | Programador VR1 [240%]; Oculus Quest [0.1%]; Programador VR2 [240%]; Programador VR3 [240%] | 724h | 724h | 10,918 | 10,850 | 10,882 |
| 10 | 3 | **1.3 Testeo** | 34d | 2026-02-05 | 2026-03-25 |  |  |  | 2026-02-05 | 2026-03-25 | 34d | 0d |  |  | 512h |  | 6,654 | 6,654 |  |
| 11 | 3.1 | 1.3.1 Tests | 14d | 2026-02-05 | 2026-02-24 | 9 |  |  | 2026-02-05 | 2026-02-24 | 14d | 0d |  | Investigador UX; Oculus Quest [0.1%] | 112h |  | 1,394 | 1,394 |  |
| 12 | 3.2 | 1.3.2 Evaluación de resultados | 5d | 2026-02-25 | 2026-03-03 | 11 |  |  | 2026-02-25 | 2026-03-03 | 5d | 0d |  | Investigador UX; Oculus Quest [0.1%] | 40h |  | 530 | 530 |  |
| 13 | 3.3 | 1.3.3 Acciones correctivas | 15d | 2026-03-04 | 2026-03-25 | 12 |  |  | 2026-03-04 | 2026-03-25 | 15d | 0d |  | Programador VR1; Animador 3D; Modelador y Texturizador 3D; Oculus Quest [0.1%] | 360h |  | 4,730 | 4,730 |  |
| 14 | 4 | **1.4 Cierre** | 10d | 2026-03-26 | 2026-04-08 |  |  |  | 2026-03-26 | 2026-04-08 | 10d | 0d |  |  | 80h |  | 1,120 | 1,120 |  |
| 15 | 4.1 | 1.4.1 Aprobación del producto | 5d | 2026-03-26 | 2026-04-01 | 13 |  |  | 2026-03-26 | 2026-04-01 | 5d | 0d |  | Project Manager | 40h |  | 560 | 560 |  |
| 16 | 4.2 | 1.4.2 Archivo de la documentación del proyecto | 5d | 2026-04-02 | 2026-04-08 | 15 |  |  | 2026-04-02 | 2026-04-08 | 5d | 0d |  | Project Manager | 40h |  | 560 | 560 |  |
